# Neuer Aussenstandort

Schedule from MS Project, 2025-05-26 to 2025-08-25, costs in CHF.
IT-AG

## Calendars

- Standard: Mon-Fri 08:00-12:00, 13:00-17:00; Sat-Sun off.

## Resources

| Resource | Group | Rate |
| --- | --- | --- |
| Eden Bruderer | IT-AG | 120 |
| David Strainovic | IT-AG | 120 |
| Okram Itellof | IT-AG | 100 |
| Rainer Ernst | IT-AG | 100 |
| Kevin Ammersinn | Zügel-GMBH | 100 |
| Bernd Notarius | Notar | 100 |
| Marvin Beak | IT-AG | 100 |

## Schedule

| ID | WBS | Task | Type | Duration | Start | Finish | Predecessors | Total slack | Free slack | Resources | Work | Cost | Lieferobjekt | Aufwand |
| --- | --- | --- | --- | --- | --- | --- | --- | --- | --- | --- | --- | --- | --- | --- |
| 1 | 1 | **Vor-Analyse** |  | 4d | 2025-05-26 | 2025-05-29 |  |  |  |  | 44h | 5,200 |  |  |
| 2 | 1.1 | Projektauftrag erstellen |  | 1d | 2025-05-26 | 2025-05-26 |  | 3.75d | 0d | Rainer Ernst [50%] | 4h | 400 | Projektauftrag | 8h |
| 3 | 1.2 | Projektauftrag prüfen |  | 1d | 2025-05-26 | 2025-05-26 |  | 5.75d |  | David Strainovic; Eden Bruderer | 16h | 1,920 |  | 12h |
| 4 | 1.3 | Rahmenbedingungen klären |  | 1d | 2025-05-27 | 2025-05-27 | 2 | 3.75d | 0d | David Strainovic; Eden Bruderer | 16h | 1,920 | Konzept | 8h |
| 5 | 1.4 | Risikoanalyse |  | 1d | 2025-05-28 | 2025-05-28 | 4 | 3.75d |  | Eden Bruderer | 8h | 960 | Risikobericht | 20h |
| 6 | 1.5 | MS: Projekt bewilligt | milestone | 0d | 2025-05-26 | 2025-05-26 |  | 6.75d |  |  |  |  |  |  |
| 7 | 2 | **Konzept-Evaluation** |  | 4d | 2025-05-29 | 2025-06-04 | 1 |  |  |  | 32h | 3,840 |  |  |
| 8 | 2.1 | Pflichtenheft |  | 1d | 2025-05-29 | 2025-05-30 |  | 5d |  | David Strainovic | 8h | 960 | Pflichtenheft | 12h |
| 9 | 2.2 | Expertengespräche durchführen |  | 3d | 2025-05-29 | 2025-06-03 |  | 3d |  | Eden Bruderer | 24h | 2,880 |  | 24h |
| 10 | 2.3 | MS: Projekt erfolgreich zu Ende gebracht | milestone | 0d | 2025-05-29 | 2025-05-29 |  | 6d |  |  |  |  |  |  |
| 11 | 3 | **Umsetzungsplanung** |  | 23d | 2025-06-04 | 2025-07-07 | 7 | 2d | 0d |  | 376h | 42,720 |  |  |
| 12 | 3.1 | Projektstrukturplan erstellen |  | 2d | 2025-06-04 | 2025-06-06 |  | 2d | 0d | David Strainovic | 16h | 1,920 | PSP | 16h |
| 13 | 3.2 | Liegenschaftsliste erstellen |  | 4d | 2025-06-06 | 2025-06-12 | 12 | 2d | 0d | Marvin Beak [50%]; Okram Itellof [50%] | 32h | 3,200 | Gebäude rausgesucht | 16h |
| 14 | 3.3 | Liegenschaften besichtigen |  | 15d | 2025-06-12 | 2025-07-03 | 13 | 2d | 0d | David Strainovic; Eden Bruderer; Marvin Beak [50%] | 300h | 34,800 |  | 80h |
| 15 | 3.4 | Nutzwertanalyse der Liegenschaften |  | 2d | 2025-07-03 | 2025-07-07 | 14 | 2d |  | Marvin Beak [50%] | 8h | 800 | Nutzwertanalyse | 8h |
| 16 | 3.5 | Offerten für Einrichtung einholen |  | 5d | 2025-06-04 | 2025-06-11 |  | 20d |  | Marvin Beak [50%] | 20h | 2,000 | Offerten | 10h |
| 17 | 3.6 | MS: Für ein Gebäude entschieden | milestone | 0d | 2025-06-04 | 2025-06-04 |  | 25d |  |  |  |  |  |  |
| 18 | 4 | **Realisierung** |  | 36d | 2025-07-04 | 2025-08-25 | 11 |  |  |  | 332h | 37,040 |  |  |
| 19 | 4.1 | Mietvertrag prüfen & unterzeichnen |  | 2d | 2025-07-04 | 2025-07-08 |  | 3d | 0d | Bernd Notarius | 16h | 1,600 | Vertrag | 16h |
| 20 | 4.2 | Einrichtung bestellen |  | 21d | 2025-07-04 | 2025-08-04 |  | 12d |  | Eden Bruderer | 168h | 20,160 | Büroeinrichtung | 10h |
| 21 | 4.3 | Gebäude übernehmen |  | 3d | 2025-07-08 | 2025-07-11 | 19 | 3d | 0d | David Strainovic; Bernd Notarius | 48h | 5,280 | Schlüssel für das Gebäude & Papierkram | 24h |
| 22 | 4.4 | IT-Infrastruktur einrichten |  | 25d | 2025-07-11 | 2025-08-15 | 21 | 3d |  | Okram Itellof [50%] | 100h | 10,000 | Funktionierende Infrastruktur | 100h |
| 23 | 4.5 | MS: Standort bereit zur Einführung | milestone | 0d | 2025-07-04 | 2025-07-04 |  | 33d |  |  |  |  |  |  |
| 24 | 5 | **Einführung** |  | 4d | 2025-08-04 | 2025-08-08 | 18 |  |  |  | 52h | 5,680 |  |  |
| 25 | 5.1 | Neuer Standort den Mitarbeitern übergeben |  | 1d | 2025-08-04 | 2025-08-05 |  | 14d |  | Eden Bruderer | 8h | 960 |  | 8h |
| 26 | 5.2 | Einweihungsfest |  | 2d | 2025-08-04 | 2025-08-06 |  | 12d | 0d | Marvin Beak [50%] | 8h | 800 | Glückliche Mitarbeiter | 8h |
| 27 | 5.3 | Abschlussmeeting |  | 1d | 2025-08-06 | 2025-08-07 | 26 | 12d |  | David Strainovic; Eden Bruderer; Kevin Ammersinn; Marvin Beak [50%]; Okram Itellof [50%]; Rainer Ernst [50%] | 36h | 3,920 |  | 8h |
| 28 | 5.4 | MS: Projektergebnis erfolgreich getestet und eingeführt | milestone | 0d | 2025-08-04 | 2025-08-04 |  | 15d |  |  |  |  |  |  |
